Schedule from MS Project, 2024-09-16 to 2025-06-16, status date 2024-10-18, costs in ₫, A marks actual dates.

## Calendars

- WorkTimeProject: Mon-Fri 08:00-12:00, 13:00-17:00; Sat-Sun off. Exceptions (off unless hours are given): 2025-01-01 (Nghi Tet Duong Lich 1/1), 2025-04-30 to 2025-05-01 (Nghi 30/4, Quoc Te Lao Dong).

## Resources

| Resource | Group | Unit | Rate |
| --- | --- | --- | --- |
| Lê Minh Thật | Manager |  | 300000 |
| Lương Gia Bảo | Dev |  | 200000 |
| Man Nhật Tùng | Dev |  | 200000 |
| Phạm Kiên Chính | Dev |  | 200000 |
| Trần Thanh Tuấn | Dev |  | 200000 |
| Lê Thành | Dev |  | 200000 |
| Nguyễn Thành Đạt | Analysis |  | 200000 |
| Nguyễn Ngọc Hân | Analysis |  | 200000 |
| Phạm Minh Hiếu | Analysis |  | 200000 |
| Kiều Trương Hàm Hương | Tester |  | 200000 |
| Võ Công Hưng | Tester |  | 200000 |
| Máy tính |  | Máy | 15000000 |
| Server |  | Server | 30000000 |
| Phần mềm AdobeXD |  |  |  |
| Phần mềm IDE |  |  |  |
| Phần mềm MySQL Workbench |  |  |  |
| Tên miền |  |  |  |

## Schedule

| ID | WBS | Task | Type | Duration | Start | Finish | Predecessors | Complete | Remaining | Total slack | Resources | Work | Actual work | Cost | Actual cost |
| --- | --- | --- | --- | --- | --- | --- | --- | --- | --- | --- | --- | --- | --- | --- | --- |
| 1 | 1 | **Tin học hóa Đại hoc MC** |  | 193d | 2024-09-16 A | 2025-06-16 |  | 13% | 168d | 0d |  | 5536h | 584h | 1,351,400,000 | 163,200,000 |
| 2 | 1.1 | **Khởi động dự án** |  | 13d | 2024-09-16 A | 2024-10-02 A |  | 100% |  |  |  | 256h | 256h | 93,600,000 | 93,600,000 |
| 3 | 1.1.1 | Xác định yêu cầu ban đầu |  | 1w | 2024-09-16 A | 2024-09-20 A |  | 100% |  |  | Lê Minh Thật; Nguyễn Thành Đạt; Nguyễn Ngọc Hân; Phạm Minh Hiếu | 160h | 160h | 36,000,000 | 36,000,000 |
| 4 | 1.1.2 | Lập kế hoạch cho dự án |  | 1w | 2024-09-23 A | 2024-09-27 A | 3 | 100% |  |  | Lê Minh Thật; Nguyễn Thành Đạt; Nguyễn Ngọc Hân; Phạm Minh Hiếu |  |  | 36,000,000 | 36,000,000 |
| 5 | 1.1.3 | Phân công đội ngũ |  | 3d | 2024-09-30 A | 2024-10-02 A | 4 | 100% |  |  | Lê Minh Thật; Nguyễn Thành Đạt; Nguyễn Ngọc Hân; Phạm Minh Hiếu | 96h | 96h | 21,600,000 | 21,600,000 |
| 6 | 1.1.4 | Hoàn thành khởi động | milestone | 0d | 2024-10-02 A | 2024-10-02 A | 3, 4, 5 | 100% |  |  |  |  |  |  |  |
| 7 | 1.2 | **Phân tích và thiết kế hệ thông** |  | 40d | 2024-10-03 A | 2024-11-27 |  | 30% | 28d | 140d |  | 1000h | 328h | 226,800,000 | 69,600,000 |
| 8 | 1.2.1 | Phân tích yêu cầu chi tiết |  | 1w | 2024-10-03 A | 2024-10-09 A | 5 | 100% |  |  | Lê Minh Thật; Nguyễn Thành Đạt; Nguyễn Ngọc Hân; Phạm Minh Hiếu; Tên miền [0.1%] | 160h | 160h | 41,400,000 | 36,000,000 |
| 9 | 1.2.2 | Thiết kế cơ sở dữ liệu |  | 2w | 2024-10-10 A | 2024-10-23 | 8 | 70% | 0.6w | 0d | Nguyễn Thành Đạt; Nguyễn Ngọc Hân; Phạm Minh Hiếu; Phần mềm MySQL Workbench [0.1%]; Tên miền [0.1%] | 240h | 168h | 59,400,000 | 33,600,000 |
| 10 | 1.2.3 | Thiết kế hệ thông backend |  | 2w | 2024-10-24 | 2024-11-06 | 9 |  |  | 0d | Nguyễn Thành Đạt; Nguyễn Ngọc Hân; Phạm Minh Hiếu | 240h |  | 48,000,000 |  |
| 11 | 1.2.4 | Thiết kế giao diện người dùng |  | 3w | 2024-11-07 | 2024-11-27 | 10 |  |  | 0d | Nguyễn Thành Đạt; Nguyễn Ngọc Hân; Phạm Minh Hiếu; Phần mềm AdobeXD [0.1%] | 360h |  | 78,000,000 |  |
| 12 | 1.2.5 | Hoàn thành phân tích và thiết kế | milestone | 0d | 2024-11-27 | 2024-11-27 | 8, 9, 10, 11 |  |  | 140d |  |  |  |  |  |
| 13 | 1.3 | **Phát triển hệ thống** |  | 105d | 2024-11-28 | 2025-04-24 |  |  |  | 0d |  | 2960h |  | 707,000,000 |  |
| 14 | 1.3.1 | **Backend** |  | 25d | 2024-11-28 | 2025-01-02 |  |  |  | 0d |  | 400h |  | 144,000,000 |  |
| 15 | 1.3.1.1 | Xây dựng cơ sở dữ liệu |  | 2w | 2024-11-28 | 2024-12-11 | 11 |  |  | 0d | Lương Gia Bảo; Man Nhật Tùng; Máy tính [2 Máy]; Server [1 Server]; Phần mềm IDE [0.1%] | 160h |  | 96,000,000 |  |
| 16 | 1.3.1.2 | Phát triển API cho hệ thống |  | 1w | 2024-12-12 | 2024-12-18 | 15 |  |  | 0d | Lương Gia Bảo; Man Nhật Tùng | 80h |  | 16,000,000 |  |
| 17 | 1.3.1.3 | Tích hợp bảo mật |  | 2w | 2024-12-19 | 2025-01-02 | 16 |  |  | 0d | Lương Gia Bảo; Man Nhật Tùng | 160h |  | 32,000,000 |  |
| 18 | 1.3.1.4 | Hoàn thành backend | milestone | 0d | 2025-01-02 | 2025-01-02 | 15, 16, 17 |  |  | 115d |  |  |  |  |  |
| 19 | 1.3.2 | **Frontend** |  | 50d | 2025-01-03 | 2025-03-13 |  |  |  | 0d |  | 1200h |  | 291,000,000 |  |
| 20 | 1.3.2.1 | Phát triển giao diện cho sinh viên |  | 3w | 2025-01-03 | 2025-01-23 | 17 |  |  | 0d | Phạm Kiên Chính; Trần Thanh Tuấn; Lê Thành; Máy tính [3 Máy]; Phần mềm IDE [0.1%] | 360h |  | 123,000,000 |  |
| 21 | 1.3.2.2 | Phát triển giao diện cho giảng viên |  | 3w | 2025-01-24 | 2025-02-13 | 20 |  |  | 0d | Phạm Kiên Chính; Trần Thanh Tuấn; Lê Thành | 360h |  | 72,000,000 |  |
| 22 | 1.3.2.3 | Phát triển giao diện cho quản lý |  | 1mo | 2025-02-14 | 2025-03-13 | 21 |  |  | 0d | Phạm Kiên Chính; Trần Thanh Tuấn; Lê Thành | 480h |  | 96,000,000 |  |
| 23 | 1.3.2.4 | Hoàn thành frontend | milestone | 0d | 2025-03-13 | 2025-03-13 | 20, 21, 22 |  |  | 65d |  |  |  |  |  |
| 24 | 1.3.3 | **Tích hợp và kiểm thử nội bộ** |  | 30d | 2025-03-14 | 2025-04-24 |  |  |  | 0d |  | 1360h |  | 272,000,000 |  |
| 25 | 1.3.3.1 | Tích hợp fontend và backend |  | 1mo | 2025-03-14 | 2025-04-10 | 22 |  |  | 0d | Lương Gia Bảo; Man Nhật Tùng; Phạm Kiên Chính; Trần Thanh Tuấn; Lê Thành | 800h |  | 160,000,000 |  |
| 26 | 1.3.3.2 | Kiểm thử nội bộ |  | 2w | 2025-04-11 | 2025-04-24 | 25 |  |  | 0d | Lương Gia Bảo; Man Nhật Tùng; Phạm Kiên Chính; Trần Thanh Tuấn; Lê Thành; Kiều Trương Hàm Hương; Võ Công Hưng | 560h |  | 112,000,000 |  |
| 27 | 1.3.3.3 | Hoàn thành tích hợp | milestone | 0d | 2025-04-24 | 2025-04-24 | 25, 26 |  |  | 35d |  |  |  |  |  |

| ID | WBS | Task | Type | Duration | Start | Finish | Predecessors | Total slack | Resources | Work | Cost |
| --- | --- | --- | --- | --- | --- | --- | --- | --- | --- | --- | --- |
| 28 | 1.4 | **Kiểm thử hệ thống** |  | 20d | 2025-04-25 | 2025-05-26 | 26 | 0d |  | 840h | 224,000,000 |
| 29 | 1.4.1 | Kiểm thử chức năng |  | 2w | 2025-04-25 | 2025-05-12 | 26 | 0d | Lương Gia Bảo; Man Nhật Tùng; Phạm Kiên Chính; Trần Thanh Tuấn; Lê Thành; Kiều Trương Hàm Hương; Võ Công Hưng | 560h | 112,000,000 |
| 30 | 1.4.2 | Kiểm thử hiệu suất |  | 1w | 2025-05-13 | 2025-05-19 | 29 | 0d | Lương Gia Bảo; Man Nhật Tùng; Phạm Kiên Chính; Trần Thanh Tuấn; Lê Thành; Kiều Trương Hàm Hương; Võ Công Hưng |  | 56,000,000 |
| 31 | 1.4.3 | Kiểm thử bảo mật |  | 1w | 2025-05-20 | 2025-05-26 | 30 | 0d | Lương Gia Bảo; Man Nhật Tùng; Phạm Kiên Chính; Trần Thanh Tuấn; Lê Thành; Kiều Trương Hàm Hương; Võ Công Hưng | 280h | 56,000,000 |
| 32 | 1.4.4 | Hoàn thành kiểm thử hệ thống | milestone | 0d | 2025-05-26 | 2025-05-26 | 29, 30, 31 | 15d |  |  |  |
| 33 | 1.5 | **Triển khai hệ thống** |  | 15d | 2025-05-27 | 2025-06-16 |  | 0d |  | 480h | 100,000,000 |
| 34 | 1.5.1 | Cài đặt hệ thống |  | 1w | 2025-05-27 | 2025-06-02 | 31 | 0d | Lương Gia Bảo; Man Nhật Tùng; Phạm Kiên Chính; Trần Thanh Tuấn; Lê Thành | 200h | 40,000,000 |
| 35 | 1.5.2 | Đào tạo người dùng |  | 1w | 2025-06-03 | 2025-06-09 | 34 | 0d | Nguyễn Thành Đạt; Nguyễn Ngọc Hân; Phạm Minh Hiếu | 120h | 24,000,000 |
| 36 | 1.5.3 | Triển khai chinh thức |  | 1w | 2025-06-10 | 2025-06-16 | 35 | 0d | Lê Minh Thật; Nguyễn Thành Đạt; Nguyễn Ngọc Hân; Phạm Minh Hiếu | 160h | 36,000,000 |
| 37 | 1.6 | Hoàn thành dự án tin học hóa MC | milestone | 0d | 2025-06-16 | 2025-06-16 | 36 | 0d |  |  |  |
